# Projetos e processos

Schedule from ProjectLibre, 2024-03-04 to 2024-06-21.

## Calendars

- Padrão: Mon-Fri 08:00-12:00, 13:00-17:00; Sat-Sun off.

## Resources

| Resource | Rate |
| --- | --- |
| Não atribuído |  |
| Ana Cecília - Gestor(a) | 71 |
| Isabela Cristina - Desenvolvedor Front-end Pleno | 39 |
| Daniel Sena Pessoa- Desenvolvedor Back-end Seniôr | 52 |
| Isabela Cristina - Especialista em Experiência de Usuário (UX) | 31.25 |
| Isabela Cristina- Design de Interface do Usuário | 18.77 |
| Juan Tápias - Tester Seniôr | 46.87 |
| Maketing |  |
| Financeiro |  |

## Schedule

| ID | WBS | Task | Duration | Start | Finish | Predecessors | Complete | Constraint | Resources |
| --- | --- | --- | --- | --- | --- | --- | --- | --- | --- |
| 2 | 1 | **Iniciação do Projeto** | 2d | 2024-03-04 08:00 | 2024-03-05 17:00 |  | 47% | start no earlier than 2024-03-04 08:00 | Ana Cecília - Gestor(a) |
| 3 | 1.1 | **Definição de Objetivos** | 0.62d | 2024-03-04 08:00 | 2024-03-04 14:00 |  | 53% |  | Ana Cecília - Gestor(a) [50%]; Isabela Cristina - Desenvolvedor Front-end Pleno [50%]; Daniel Sena Pessoa- Desenvolvedor Back-end Seniôr [50%]; Isabela Cristina- Design de Interface do Usuário [50%]; Isabela Cristina - Especialista em Experiência de Usuário (UX) [50%] |
| 4 | 1.1.1 | Reunião inicial com a equipe para identificar os objetivos do projeto | 0.25d | 2024-03-04 08:00 | 2024-03-04 10:00 |  | 100% |  | Ana Cecília - Gestor(a) |
| 5 | 1.1.2 | Análise e documentação dos objetivos definidos | 0.25d | 2024-03-04 11:00 | 2024-03-04 14:00 |  | 100% | start no earlier than 2024-03-04 11:00 | Ana Cecília - Gestor(a) |
| 6 | 1.2 | **Identificação de Interessados** | 0.38d | 2024-03-04 14:00 | 2024-03-04 17:00 |  | 100% | start no earlier than 2024-03-01 08:00 |  |
| 7 | 1.2.1 | Pesquisa e identificação de todas as partes interessadas | 0.12d | 2024-03-04 14:00 | 2024-03-04 15:00 |  | 100% | start no earlier than 2024-03-04 14:00 | Ana Cecília - Gestor(a) |
| 8 | 1.2.2 | Agendamento de reuniões individuais para entender as necessidades e expectativas de cada interessado | 0.12d | 2024-03-04 15:00 | 2024-03-04 16:00 | 7 | 100% | start no earlier than 2024-03-04 15:00 | Ana Cecília - Gestor(a) |
| 9 | 1.2.3 | Documentação das informações coletadas sobre os interessados | 0.12d | 2024-03-04 16:00 | 2024-03-04 17:00 | 8 | 100% |  | Ana Cecília - Gestor(a) |
| 10 | 1.3 | **Estudo de Viabilidade** | 0.5d | 2024-03-05 08:00 | 2024-03-05 13:00 |  | 100% | start no earlier than 2024-03-05 08:00 |  |
| 11 | 1.3.1 | Coleta de dados para análise de viabilidade técnica, financeira e operacional | 0.12d | 2024-03-05 08:00 | 2024-03-05 09:00 |  | 100% |  | Ana Cecília - Gestor(a); Financeiro |
| 12 | 1.3.2 | Análise dos dados coletados para determinar a viabilidade do projeto | 0.12d | 2024-03-05 10:00 | 2024-03-05 11:00 |  | 100% | start no earlier than 2024-03-05 10:00 | Ana Cecília - Gestor(a) |
| 13 | 1.3.3 | Preparação e apresentação do relatório de viabilidade para revisão e aprovação | 0.12d | 2024-03-05 11:00 | 2024-03-05 13:00 | 12 | 100% |  | Ana Cecília - Gestor(a) |
| 14 | 1.4 | **Aprovação do Escopo** | 0.5d | 2024-03-05 12:00 | 2024-03-05 17:00 |  | 100% | start no earlier than 2024-03-05 13:00 |  |
| 15 | 1.4.1 | Revisão do escopo do projeto com a equipe e partes interessadas | 0.25d | 2024-03-05 12:00 | 2024-03-05 15:00 |  | 100% | start no earlier than 2024-03-04 13:00 | Ana Cecília - Gestor(a); Daniel Sena Pessoa- Desenvolvedor Back-end Seniôr [50%]; Isabela Cristina - Desenvolvedor Front-end Pleno [50%] |
| 16 | 1.4.2 | Documentação das alterações no escopo, se necessário | 0.25d | 2024-03-05 15:00 | 2024-03-05 17:00 | 15 | 100% |  | Ana Cecília - Gestor(a) [150%] |
| 17 | 2 | **Planejamento** | 2d | 2024-03-06 08:00 | 2024-03-07 17:00 |  | 48% | start no earlier than 2024-03-06 08:00 |  |
| 18 | 2.1 | **Elaboração do Plano do Projeto** | 0.5d | 2024-03-06 08:00 | 2024-03-06 13:00 |  | 50% | start no earlier than 2024-03-06 08:00 | Ana Cecília - Gestor(a) |
| 19 | 2.1.1 | Definição de recursos necessarios e alocação de responsabilidade | 0.12d | 2024-03-06 08:00 | 2024-03-06 09:00 |  | 100% |  | Ana Cecília - Gestor(a) |
| 20 | 2.1.2 | Identificação das tarefas e atividades necessárias para o projeto | 0.12d | 2024-03-06 09:00 | 2024-03-06 10:00 |  | 100% | start no earlier than 2024-03-06 09:00 | Ana Cecília - Gestor(a) |
| 21 | 2.1.3 | Desenvolvimento do cronograma do projeto | 0.25d | 2024-03-06 10:00 | 2024-03-06 13:00 | 20 | 100% |  | Ana Cecília - Gestor(a) |
| 22 | 2.2 | **Definição de Requisitos** | 0.5d | 2024-03-06 12:00 | 2024-03-06 17:00 |  | 43% |  | Ana Cecília - Gestor(a) |
| 23 | 2.2.1 | Levantamento de requisitos com base nas necessidades dos usuários e partes interessadas | 0.12d | 2024-03-06 12:00 | 2024-03-06 14:00 |  | 100% | start no earlier than 2024-03-06 13:00 | Ana Cecília - Gestor(a) |
| 24 | 2.2.2 | Documentação dos requisitos em um documento de especificação | 0.38d | 2024-03-06 14:00 | 2024-03-06 17:00 | 23 | 100% |  | Ana Cecília - Gestor(a) |
| 25 | 2.3 | **Design de Interface do Usuário (UI/UX)** | 0.38d | 2024-03-07 08:00 | 2024-03-07 11:00 |  | 27% |  | Isabela Cristina- Design de Interface do Usuário |
| 26 | 2.3.1 | Criação de wireframes e protótipos de UI/UX | 0.12d | 2024-03-07 08:00 | 2024-03-07 09:00 |  | 100% | start no earlier than 2024-03-07 08:00 | Isabela Cristina - Especialista em Experiência de Usuário (UX) |
| 27 | 2.3.2 | Revisão e iteração dos designs com a equipe e partes interessadas | 0.25d | 2024-03-07 09:00 | 2024-03-07 11:00 | 26 | 100% | start no earlier than 2024-03-07 09:00 | Isabela Cristina - Especialista em Experiência de Usuário (UX) |

| ID | WBS | Task | Duration | Start | Finish | Predecessors | Complete | Constraint | Resources |
| --- | --- | --- | --- | --- | --- | --- | --- | --- | --- |
| 28 | 2.4 | **Planejamento de Recursos** | 0.62d | 2024-03-07 11:00 | 2024-03-07 17:00 |  | 100% | start no earlier than 2024-03-07 11:00 |  |
| 29 | 2.4.1 | Identificação e alocação de recursos humanos, materiais e financeiros | 0.38d | 2024-03-07 11:00 | 2024-03-07 15:00 |  | 100% | start no earlier than 2024-03-06 11:00 | Ana Cecília - Gestor(a) |
| 30 | 2.4.2 | Preparação de planilhas de orçamento e previsão de custos | 0.25d | 2024-03-07 15:00 | 2024-03-07 17:00 | 29 | 100% |  | Ana Cecília - Gestor(a) |
| 31 | 3 | **Desenvolvimento** | 27d | 2024-03-08 08:00 | 2024-04-15 17:00 |  | 79% | start no earlier than 2024-03-08 08:00 |  |
| 32 | 3.1 | **Configuração do ambiente de desenvolvimento** | 0.38d | 2024-03-08 08:00 | 2024-03-08 11:00 |  | 4% |  | Daniel Sena Pessoa- Desenvolvedor Back-end Seniôr |
| 33 | 3.1.1 | Instalação e configuração de ferramentas de desenvolvimento | 0.12d | 2024-03-08 08:00 | 2024-03-08 09:00 |  | 100% |  |  |
| 34 | 3.1.2 | Configuração de servidores e ambientes de teste | 0.25d | 2024-03-08 09:00 | 2024-03-08 11:00 |  | 100% | start no earlier than 2024-03-08 09:00 | Daniel Sena Pessoa- Desenvolvedor Back-end Seniôr |
| 35 | 3.2 | **Desenvolvimento do Backend** | 10d | 2024-03-08 08:00 | 2024-03-21 17:00 |  | 100% |  | Daniel Sena Pessoa- Desenvolvedor Back-end Seniôr |
| 36 | 3.2.1 | Implementação das funcionalidades do backend conforme os requisitos especificados | 5d | 2024-03-08 08:00 | 2024-03-14 17:00 |  | 100% | start no earlier than 2024-03-08 08:00 | Daniel Sena Pessoa- Desenvolvedor Back-end Seniôr |
| 37 | 3.2.2 | Testes unitários do código backend | 5d | 2024-03-15 08:00 | 2024-03-21 17:00 | 36 | 100% | start no earlier than 2024-03-09 08:00 | Daniel Sena Pessoa- Desenvolvedor Back-end Seniôr |
| 38 | 3.3 | **Desenvolvimento do Frontend** | 7d | 2024-03-12 08:00 | 2024-03-20 17:00 |  | 94% |  | Isabela Cristina - Especialista em Experiência de Usuário (UX) [150%]; Isabela Cristina- Design de Interface do Usuário |
| 39 | 3.3.1 | Implementação das interfaces do usuário conforme os designs aprovados | 5d | 2024-03-12 08:00 | 2024-03-18 17:00 |  | 100% | start no earlier than 2024-03-12 08:00 | Isabela Cristina - Desenvolvedor Front-end Pleno |
| 40 | 3.3.2 | Integração do frontend com o backend | 5d | 2024-03-14 08:00 | 2024-03-20 17:00 |  | 100% | start no earlier than 2024-03-14 08:00 | Isabela Cristina - Desenvolvedor Front-end Pleno [50%]; Daniel Sena Pessoa- Desenvolvedor Back-end Seniôr [50%] |
| 41 | 3.4 | **Integração de Sistemas** | 5d | 2024-03-18 08:00 | 2024-03-22 17:00 |  | 88% |  | Daniel Sena Pessoa- Desenvolvedor Back-end Seniôr |
| 42 | 3.4.1 | Integração de sistemas externos, se aplicável | 3d | 2024-03-18 08:00 | 2024-03-20 17:00 |  | 100% | start no earlier than 2024-03-18 08:00 | Daniel Sena Pessoa- Desenvolvedor Back-end Seniôr |
| 43 | 3.4.2 | Testes de integração para garantir o funcionamento correto dos sistemas integrados | 2d | 2024-03-21 08:00 | 2024-03-22 17:00 | 42 | 100% |  | Daniel Sena Pessoa- Desenvolvedor Back-end Seniôr [50%]; Juan Tápias - Tester Seniôr [50%] |
| 44 | 3.5 | **Testes Unitários** | 17d | 2024-03-22 08:00 | 2024-04-15 17:00 |  | 94% |  | Juan Tápias - Tester Seniôr |
| 45 | 3.5.1 | Desenvolvimento e execução de testes unitários para todas as partes do código | 7d | 2024-03-22 08:00 | 2024-04-01 17:00 |  | 100% | start no earlier than 2024-03-22 08:00 | Juan Tápias - Tester Seniôr |
| 46 | 3.5.2 | Correção de defeitos identificados nos testes unitários | 10d | 2024-04-02 08:00 | 2024-04-15 17:00 | 45 | 100% |  | Juan Tápias - Tester Seniôr |
| 47 | 4 | **Testes** | 28d | 2024-04-16 08:00 | 2024-05-23 17:00 |  | 55% | start no earlier than 2024-04-16 08:00 |  |
| 48 | 4.1 | **Preparação de Dados de Teste** | 7.5d | 2024-04-16 08:00 | 2024-04-25 13:00 |  | 28% |  | Juan Tápias - Tester Seniôr |
| 49 | 4.1.1 | Configuração de ambientes de teste e preparação de ferramentas | 7.5d | 2024-04-16 08:00 | 2024-04-25 13:00 |  | 100% |  | Daniel Sena Pessoa- Desenvolvedor Back-end Seniôr |
| 50 | 4.1.2 | Criação de conjuntos de dados representativos | 2d | 2024-04-22 08:00 | 2024-04-23 17:00 |  | 100% | start no earlier than 2024-04-22 08:00 | Daniel Sena Pessoa- Desenvolvedor Back-end Seniôr |
| 51 | 4.2 | **Testes de Funcionalidade** | 6d | 2024-04-24 08:00 | 2024-05-01 17:00 |  | 86% | start no earlier than 2024-04-24 08:00 | Juan Tápias - Tester Seniôr |
| 52 | 4.1.1 | Execução de testes de funcionalidade em todos os recursos e funcionalidades do aplicativo | 3d | 2024-04-24 08:00 | 2024-04-26 17:00 |  | 100% |  | Juan Tápias - Tester Seniôr |
| 53 | 4.2.2 | Documentação e reporte de defeitos encontrados durante os testes | 3d | 2024-04-29 08:00 | 2024-05-01 17:00 | 52 | 100% |  | Juan Tápias - Tester Seniôr |

| ID | WBS | Task | Duration | Start | Finish | Predecessors | Complete | Constraint | Resources |
| --- | --- | --- | --- | --- | --- | --- | --- | --- | --- |
| 54 | 4.3 | **Testes de Usabilidade** | 6d | 2024-05-02 08:00 | 2024-05-09 17:00 |  | 100% | start no earlier than 2024-05-02 08:00 |  |
| 55 | 4.3.1 | Condução de testes de usabilidade com usuários reais | 3d | 2024-05-02 08:00 | 2024-05-06 17:00 |  | 100% |  | Juan Tápias - Tester Seniôr |
| 56 | 4.3.2 | Análise e documentação dos feedbacks dos usuários | 3d | 2024-05-07 08:00 | 2024-05-09 17:00 | 55 | 100% |  | Juan Tápias - Tester Seniôr |
| 57 | 4.4 | **Testes de Desempenho** | 4d | 2024-05-10 08:00 | 2024-05-15 17:00 |  | 80% | start no earlier than 2024-05-10 08:00 | Juan Tápias - Tester Seniôr |
| 58 | 4.4.1 | Execução de testes de desempenho sob diferentes condições de carga | 2d | 2024-05-10 08:00 | 2024-05-13 17:00 |  | 100% |  | Juan Tápias - Tester Seniôr |
| 59 | 4.4.2 | Identificação e resolução de gargalos de desempenho | 2d | 2024-05-14 08:00 | 2024-05-15 17:00 | 58 | 100% |  | Juan Tápias - Tester Seniôr |
| 60 | 4.5 | **Correção de Defeitos** | 6d | 2024-05-16 08:00 | 2024-05-23 17:00 |  | 89% | start no earlier than 2024-05-16 08:00 | Juan Tápias - Tester Seniôr [50%]; Daniel Sena Pessoa- Desenvolvedor Back-end Seniôr [50%] |
| 61 | 4.5.1 | Correção e verificação dos defeitos identificados durante os testes | 3d | 2024-05-16 08:00 | 2024-05-20 17:00 |  | 100% |  | Juan Tápias - Tester Seniôr [50%]; Daniel Sena Pessoa- Desenvolvedor Back-end Seniôr [50%] |
| 62 | 4.5.2 | Reexecução de testes para confirmar a correção dos defeitos | 3d | 2024-05-21 08:00 | 2024-05-23 17:00 | 61 | 100% |  | Juan Tápias - Tester Seniôr [50%]; Daniel Sena Pessoa- Desenvolvedor Back-end Seniôr |
| 63 | 5 | **Implementação** | 14d | 2024-05-24 08:00 | 2024-06-12 17:00 |  | 85% | start no earlier than 2024-05-24 08:00 |  |
| 64 | 5.1 | **Treinamento de Usuários** | 3d | 2024-05-24 08:00 | 2024-05-28 17:00 |  | 75% |  | Daniel Sena Pessoa- Desenvolvedor Back-end Seniôr |
| 65 | 5.1.1 | Preparação e condução de sessões de treinamento para os usuários finais | 2d | 2024-05-24 08:00 | 2024-05-27 17:00 |  | 100% |  | Daniel Sena Pessoa- Desenvolvedor Back-end Seniôr |
| 66 | 5.1.2 | Preparação de material de treinamento e documentação do sistema | 1d | 2024-05-28 08:00 | 2024-05-28 17:00 | 65 | 100% |  | Daniel Sena Pessoa- Desenvolvedor Back-end Seniôr |
| 67 | 5.2 | **Preparação para Lançamento** | 3d | 2024-05-29 08:00 | 2024-05-31 17:00 |  | 75% | start no earlier than 2024-05-29 08:00 | Daniel Sena Pessoa- Desenvolvedor Back-end Seniôr |
| 68 | 5.2.1 | Preparação de materiais de marketing e comunicação | 2d | 2024-05-29 08:00 | 2024-05-30 17:00 |  | 100% |  | Isabela Cristina - Especialista em Experiência de Usuário (UX) |
| 69 | 5.2.2 | Teste final do aplicativo antes do lançamento | 1d | 2024-05-31 08:00 | 2024-05-31 17:00 | 68 | 100% |  | Juan Tápias - Tester Seniôr |
| 70 | 5.3 | **Lançamento do Aplicativo** | 2d | 2024-06-03 08:00 | 2024-06-04 17:00 |  | 100% | start no earlier than 2024-06-01 08:00 | Daniel Sena Pessoa- Desenvolvedor Back-end Seniôr |
| 71 | 5.3.1 | Submissão do aplicativo às lojas de aplicativos Android e iOS | 1d | 2024-06-03 08:00 | 2024-06-03 17:00 |  | 100% |  | Isabela Cristina- Design de Interface do Usuário |
| 72 | 5.3.2 | Publicação de anúncios e comunicados à imprensa sobre o lançamento | 1d | 2024-06-04 08:00 | 2024-06-04 17:00 | 71 | 100% |  | Isabela Cristina- Design de Interface do Usuário |
| 73 | 5.4 | **Suporte pós-lançamento** | 6d | 2024-06-05 08:00 | 2024-06-12 17:00 |  | 90% | start no earlier than 2024-06-05 08:00 | Daniel Sena Pessoa- Desenvolvedor Back-end Seniôr |
| 74 | 5.4.1 | Configuração de canais de suporte para os usuários | 3d | 2024-06-05 08:00 | 2024-06-07 17:00 |  | 100% |  | Isabela Cristina - Desenvolvedor Front-end Pleno [50%]; Daniel Sena Pessoa- Desenvolvedor Back-end Seniôr [50%] |
| 75 | 5.4.2 | Resolução de problemas e atualizações regulares do aplicativo | 3d | 2024-06-10 08:00 | 2024-06-12 17:00 | 74 | 100% |  | Daniel Sena Pessoa- Desenvolvedor Back-end Seniôr |
| 76 | 6 | **Encerramento do Projeto** | 6d | 2024-06-13 15:00 | 2024-06-21 15:00 |  | 57% | start no earlier than 2024-06-13 08:00 | Isabela Cristina - Desenvolvedor Front-end Pleno; Ana Cecília - Gestor(a) |
| 77 | 6.1 | **Avaliação de Desempenho do Projeto** | 2.25d | 2024-06-13 15:00 | 2024-06-17 17:00 |  | 69% | start no earlier than 2024-06-13 15:00 | Ana Cecília - Gestor(a) |
| 78 | 6.1.1 | Coleta de feedbacks da equipe e partes interessadas sobre o desempenho do projeto | 0.25d | 2024-06-13 15:00 | 2024-06-13 17:00 |  | 100% | start no earlier than 2024-06-13 15:00 | Maketing |
| 79 | 6.1.2 | Análise dos resultados e identificação de lições aprendidas | 2d | 2024-06-14 08:00 | 2024-06-17 17:00 | 78 | 100% |  | Ana Cecília - Gestor(a) |

| ID | WBS | Task | Duration | Start | Finish | Predecessors | Complete | Constraint | Resources |
| --- | --- | --- | --- | --- | --- | --- | --- | --- | --- |
| 80 | 6.2 | **Documentação Final do Projeto** | 3d | 2024-06-18 08:00 | 2024-06-20 17:00 |  | 75% |  | Ana Cecília - Gestor(a) |
| 81 | 6.2.1 | Preparação de relatório final do projeto, incluindo lições aprendidas e recomendações | 2d | 2024-06-18 08:00 | 2024-06-19 17:00 |  | 100% | start no earlier than 2024-06-18 08:00 | Ana Cecília - Gestor(a) |
| 82 | 6.2.2 | Revisão e aprovação do relatório final pelo cliente e partes interessadas | 1d | 2024-06-20 08:00 | 2024-06-20 17:00 | 81 | 100% |  | Ana Cecília - Gestor(a) |
| 83 | 6.3 | **Entrega de Resultados** | 0.38d | 2024-06-21 08:00 | 2024-06-21 11:00 |  | 41% |  | Ana Cecília - Gestor(a) |
| 84 | 6.3.1 | Entrega de todos os artefatos e documentação final ao cliente e partes interessadas | 0.38d | 2024-06-21 08:00 | 2024-06-21 11:00 | 82 | 100% |  | Ana Cecília - Gestor(a) [50%]; Daniel Sena Pessoa- Desenvolvedor Back-end Seniôr [50%] |
| 85 | 6.4 | **Encerramento de Contratos e Pagamentos** | 0.38d | 2024-06-21 11:00 | 2024-06-21 15:00 |  | 43% |  | Ana Cecília - Gestor(a) |
| 86 | 6.4.1 | Finalização de contratos e liquidação de pagamentos pendentes | 0.38d | 2024-06-21 11:00 | 2024-06-21 15:00 | 84 | 100% |  | Ana Cecília - Gestor(a) [50%]; Financeiro [50%] |
